# Proyecto-004-HUACCANA

How a schedule from MS Project changed from version to version. A marks actual dates.

## Version 1 (saved 2020-07-07)

Note of the change: actua

| ID | WBS | Task | Duration | Start | Finish | Total float |
| --- | --- | --- | --- | --- | --- | --- |
| 1 | 1 | **Mejoramiento de los Servicios de Salud del Centro de Salud Huaccana, Distrito de Huaccana, Provincia de Chincheros, Apurímac** | 22d | 2020-06-30 | 2020-07-29 | 0d |
| 2 | 1.1 | **Instalaciones Eléctricas** | 22d | 2020-06-30 | 2020-07-29 | 0d |
| 3 | 1.1.1 | **Situación Actual** | 5d | 2020-06-30 | 2020-07-06 | 0d |
| 4 |  | Informe de Evaluación del Estado de las Instalaciones Eléctricas (diagnostico) | 4d | 2020-06-30 | 2020-07-03 |  |
| 5 |  | Solicitud de Factibilidad de Servicios a la Empresa Consecionaria | 1d | 2020-07-06 | 2020-07-06 |  |
| 6 | 1.1.2 | **Situación Proyectada** | 18d | 2020-07-06 | 2020-07-29 | 0d |
| 7 |  | Memoria Descriptiva | 3d | 2020-07-06 | 2020-07-08 |  |
| 8 |  | Cálculo estimado de las instalaciones eléctricas (Suministro Eléctrico, Tableros General y de distribución eléctrica, Sistema de iluminación exterior, interior, tomacorrientes, Sistema de fuerza, pararrayos y sistema de puesta a tierra y otros necesarios | 5d | 2020-07-09 | 2020-07-15 |  |
| 9 |  | Especificaciones técnicas generales estipulados en el anteproyecto, con los cuales se sustentarán los costos de inversión, señalando los supuestos y metodología utilizada | 5d | 2020-07-14 | 2020-07-20 |  |
| 10 |  | Cálculo del sistema de utilización en MT | 5d | 2020-07-19 | 2020-07-23 |  |
| 11 |  | Planos de Instalaciones Eléctricas | 3d | 2020-07-24 | 2020-07-28 |  |
| 12 |  | Costos de Operación y Mantenimiento de las Instalaciones Eléctricas | 1d | 2020-07-27 | 2020-07-27 |  |
| 13 |  | Costos y Presupuesto de la especialidad Instalaciones Eléctricas | 2d | 2020-07-28 | 2020-07-29 |  |

## Version 2 (saved 2020-07-07)

Note of the change: act

Last finish 2020-07-29 → 2020-08-25 (+27d).

Added:

| ID | Task | Duration | Start | Finish | Predecessors | Constraint | Resources |
| --- | --- | --- | --- | --- | --- | --- | --- |
| 14 | **Instalaciones Mecánicas** | 23d | 2020-06-30 | 2020-07-30 |  |  |  |
| 15 | **Situación Actual (Diagnostico)** | 4d | 2020-06-30 | 2020-07-03 |  |  |  |
| 16 | Informe de Evaluación del Estado de las Instalaciones Mecánicas (diagnostico) | 4d | 2020-06-30 | 2020-07-03 |  |  |  |
| 17 | **Situación Proyectada** | 19d | 2020-07-06 | 2020-07-30 |  |  |  |
| 18 | **1. Memoria Descriptiva** | 17d | 2020-07-06 | 2020-07-28 |  |  |  |
| 19 | 1.1 Sistema de gases medicinales, según corresponda | 5d | 2020-07-06 | 2020-07-10 |  |  |  |
| 20 | 1.3 Sistema de combustible (Petróleo Diesel - GLP/Gas Natural), según corresponda | 4d | 2020-07-13 | 2020-07-16 |  |  |  |
| 21 | 1.4 Sistema de circulación vertical (Ascensores: Público, montacamilla, montacargas, etc.), según corresponda | 4d | 2020-07-15 | 2020-07-20 |  |  |  |
| 22 | 1.5 Sistema de aire acondicionado y Ventilación Mecánica | 5d | 2020-07-20 | 2020-07-24 |  |  |  |
| 23 | 1.6 Sistema de grupo electrógeno (Suministro de combustible, tanque diario, tuberías, etc.) | 2d | 2020-07-27 | 2020-07-28 |  |  |  |
| 24 | 2. Cálculo estimado de las instalaciones mecánicas (Sistema de gases medicinales, central de vacío, aire acondicionado y otros) y equipos mecánicos necesarios | 1d | 2020-07-29 | 2020-07-29 |  |  |  |
| 25 | 3. Especificaciones técnicas generales estipulados en el anteproyecto, con los cuales se sustentarán los costos de inversión, señalando los supuestos y metodología utilizada | 1d | 2020-07-27 | 2020-07-27 |  |  |  |
| 26 | 4. Planos de Instalaciones Mecánicas | 2d | 2020-07-29 | 2020-07-30 |  |  |  |
| 27 | 5. Costos de operación y mantenimiento de las Instalaciones Mecánicas | 1d | 2020-07-29 | 2020-07-29 |  | start no earlier than 2020-07-29 |  |
| 28 | 6. Costos y Presupuesto de la especialidad Instalaciones Mecánicas | 1d | 2020-07-29 | 2020-07-29 |  |  |  |
| 29 | **Instalaciones Para El Sistema De Las Tecnologías De La Información Y Comunicaciones** | 22d | 2020-06-30 | 2020-07-29 |  |  |  |
| 30 | **Situación Actual** | 5d | 2020-06-30 | 2020-07-06 |  |  |  |
| 31 | Informe de Evaluación del Estado de las Instalaciones informáticas y comunicaciones (diagnostico) | 4d | 2020-06-30 | 2020-07-03 |  |  | Ing. Marco Antonio ARIZABAL ARRIAGA |
| 32 | Solicitud de factibilidad del servicio ante la autoridad y/o concesionario correspondiente | 1d | 2020-07-06 | 2020-07-06 | 31 |  | Ing. Marco Antonio ARIZABAL ARRIAGA |
| 33 | **Situación Proyectada** | 17d | 2020-07-07 | 2020-07-29 |  |  | Ing. Marco Antonio ARIZABAL ARRIAGA |
| 34 | Memoria Descriptiva | 3d | 2020-07-07 | 2020-07-09 | 32 |  | Ing. Marco Antonio ARIZABAL ARRIAGA |
| 35 | Descripción del sistema de cableado estructurado de voz, data y video. Sistema de red inalámbrica. Sistemas de cámaras de seguridad. Sistema de llamadas de enfermeras. Sistemas de sonido ambiental y perifoneo. Sistemas de control de acceso y seguridad. | 4d | 2020-07-10 | 2020-07-15 | 34 |  | Ing. Marco Antonio ARIZABAL ARRIAGA |
| 36 | Especificaciones técnicas generales estipulados en el anteproyecto, con los cuales se sustentarán los costos de inversión, señalando los supuestos y metodología utilizada | 3d | 2020-07-16 | 2020-07-20 | 35 |  | Ing. Marco Antonio ARIZABAL ARRIAGA |
| 37 | Planos de Instalaciones informáticas y de telecomunicaciones | 4d | 2020-07-21 | 2020-07-24 | 36 |  | Ing. Marco Antonio ARIZABAL ARRIAGA |
| 38 | Costos de Operación y Mantenimiento de las Instalaciones informáticas y telecomunicaciones | 1d | 2020-07-27 | 2020-07-27 | 37 |  | Ing. Marco Antonio ARIZABAL ARRIAGA |
| 39 | Costos y Presupuestos de la especialidad Instalaciones informáticas y comunicaciones | 2d | 2020-07-28 | 2020-07-29 | 38 |  | Ing. Marco Antonio ARIZABAL ARRIAGA |
| 40 | **Memoria De Estructuras** | 37d | 2020-07-06 | 2020-08-25 |  |  |  |
| 41 | **Situación Proyectada** | 37d | 2020-07-06 | 2020-08-25 |  |  |  |
| 42 | **1. Memoria Descriptiva** | 31d | 2020-07-06 | 2020-08-17 |  |  |  |
| 43 | **1.1 Descripción del sistema estructural de acuerdo a las normas técnicas del Reglamento Nacional de Edificaciones vigente** | 29d | 2020-07-06 | 2020-08-13 |  |  |  |
| 44 | 1.1.1 Descripción del tipo de cimentación recomendado, señalando los resultados del EMS de los parámetros físicos y mecánicos del suelo, profundidad de desplante, asentamientos totales y diferenciales esperados. (diseño de cimentación) | 4d | 2020-07-06 | 2020-07-09 |  |  | Ing. Ángel Américo Mendoza Navarro |
| 45 | 1.1.2 Descripción del sistema estructural, los elementos estructurales que lo conformarán y el sistema de protección sísmica empleado (incluye cálculos preliminares sobre aisladores y especificaciones técnicas generales, consideradas en el anteproyecto, c | 12d | 2020-07-10 | 2020-07-27 | 44 |  | Ing. Ángel Américo Mendoza Navarro |
| 46 | 1.1.3 Desplazamientos laterales máximos esperados según sistema de protección empleado (obras exteriores) | 6d | 2020-07-28 | 2020-08-04 | 45 |  | Ing. Ángel Américo Mendoza Navarro |
| 47 | 1.1.4 Recomendación de las características físicas y mecánicas del concreto, acero, ladrillo u otros materiales de construcción que conforman a los elementos estructurales, y las consideraciones de diseño, funcionalidad y durabilidad para estos materiales | 4d | 2020-08-10 | 2020-08-13 | 46 |  | Ing. Ángel Américo Mendoza Navarro |
| 48 | 1.2 Recomendaciones técnicas para el diseño de la estructura de acuerdo a lo estipulado en el Decreto Supremo 02-2014 “Aislamiento y Disipación de Energía Sísmica” (*) (**) | 2d | 2020-08-14 | 2020-08-17 | 47 |  | Ing. Ángel Américo Mendoza Navarro |
| 49 | 2. Consideraciones generales | 1d | 2020-08-18 | 2020-08-18 | 48 |  | Ing. Ángel Américo Mendoza Navarro |
| 50 | 3. Planos de Estructuras preliminares que muestren los elementos estructurales principales, acorde con el predimensionamiento efectuado | 7d | 2020-08-17 | 2020-08-25 |  |  | Ing. Ángel Américo Mendoza Navarro |
| 51 | **MEMORIA DE ARQUITECTURA** | 6d | 2020-06-30 | 2020-07-07 |  |  |  |
| 52 | **Situación Proyectada** | 6d | 2020-06-30 | 2020-07-07 |  |  |  |
| 53 | Documentos que acrediten título de propiedad u otro documento que respalde el saneamiento físico legal (Documento original con fecha de expedición no mayor a 4 meses) del terreno seleccionado | 2d | 2020-06-30 | 2020-07-01 |  |  |  |
| 54 | Certificado de Parámetros Urbanísticos y Edificatorios, de acuerdo a la norma NT GE.010, “Condiciones generales de diseño” artículo N° 04 del Reglamento Nacional de Edificaciones vigente. (Emisión no mayor a 4 meses) | 2d | 2020-07-06 | 2020-07-07 |  |  |  |
| 55 | Propuesta de Programa Arquitectónico (que incluya % muros y circulaciones) | 0d | 2020-06-30 | 2020-06-30 |  |  |  |
| 56 | Plano de ubicación y localización de la propuesta. Indicar las medidas perimétricas del terreno, y su concordancia con lo indicado en el título de propiedad. | 0d | 2020-06-30 | 2020-06-30 |  |  |  |
| 57 | Cuadro comparativo de los parámetros urbanísticos y edificatorios, con los índices resultantes del proyecto | 2d | 2020-06-30 | 2020-07-01 |  |  |  |
| 58 | Memoria Descriptiva de Arquitectura | 3d | 2020-06-30 | 2020-07-02 |  |  |  |
| 59 | Descripción del planteamiento técnico arquitectónico del proyecto | 3d | 2020-06-30 | 2020-07-02 |  |  |  |
| 60 | Programa arquitectónico | 0d | 2020-06-30 | 2020-06-30 |  |  |  |
| 61 | Organigrama funcional | 5d | 2020-06-30 | 2020-07-06 |  |  |  |
| 62 | Anteproyecto de arquitectura | 0d | 2020-06-30 | 2020-06-30 |  |  |  |
| 63 | Esquema de flujos y circulaciones | 4d | 2020-06-30 | 2020-07-03 |  |  |  |
| 64 | Cortes esquemáticos de la propuesta volumétrica sobre la topografía del terreno | 4d | 2020-06-30 | 2020-07-03 |  |  |  |
| 65 | Plan de Contingencia | 5d | 2020-06-30 | 2020-07-06 |  |  |  |

Changed:

| ID | Task | Finish | Duration |
| --- | --- | --- | --- |
| 1 | **Mejoramiento de los Servicios de Salud del Centro de Salud Huaccana, Distrito de Huaccana, Provincia de Chincheros, Apurímac** | 2020-07-29 → 2020-08-25 (+27d) | 22d → 41d |

## Version 3 (saved 2020-07-07)

Note of the change: act

Last finish stays 2020-08-25.

Changed:

| ID | Task | Start | Finish | Duration | Predecessors |
| --- | --- | --- | --- | --- | --- |
| 51 | **MEMORIA DE ARQUITECTURA** |  | 2020-07-07 → 2020-08-12 (+36d) | 6d → 32d |  |
| 52 | **Situación Proyectada** |  | 2020-07-07 → 2020-08-12 (+36d) | 6d → 32d |  |
| 54 | Certificado de Parámetros Urbanísticos y Edificatorios, de acuerdo a la norma NT GE.010, “Condiciones generales de diseño” artículo N° 04 del Reglamento Nacional de Edificaciones vigente. (Emisión no mayor a 4 meses) | 2020-07-06 → 2020-07-02 (-4d) | 2020-07-07 → 2020-07-03 (-4d) |  | none → 53 |
| 57 | Cuadro comparativo de los parámetros urbanísticos y edificatorios, con los índices resultantes del proyecto | 2020-06-30 → 2020-07-08 (+8d) | 2020-07-01 → 2020-07-09 (+8d) |  | none → 54 |
| 58 | Memoria Descriptiva de Arquitectura | 2020-06-30 → 2020-07-10 (+10d) | 2020-07-02 → 2020-07-14 (+12d) |  | none → 57 |
| 59 | Descripción del planteamiento técnico arquitectónico del proyecto | 2020-06-30 → 2020-07-15 (+15d) | 2020-07-02 → 2020-07-17 (+15d) |  | none → 58 |
| 61 | Organigrama funcional | 2020-06-30 → 2020-07-20 (+20d) | 2020-07-06 → 2020-07-24 (+18d) |  | none → 59 |
| 63 | Esquema de flujos y circulaciones | 2020-06-30 → 2020-07-27 (+27d) | 2020-07-03 → 2020-07-30 (+27d) |  | none → 61 |
| 64 | Cortes esquemáticos de la propuesta volumétrica sobre la topografía del terreno | 2020-06-30 → 2020-07-31 (+31d) | 2020-07-03 → 2020-08-05 (+33d) |  | none → 63 |
| 65 | Plan de Contingencia | 2020-06-30 → 2020-08-06 (+37d) | 2020-07-06 → 2020-08-12 (+37d) |  | none → 64 |

## Version 4 (saved 2020-07-07)

Note of the change: Programacion

Last finish stays 2020-08-25.

Added:

| ID | Task | Duration | Start | Finish | Predecessors | Resources |
| --- | --- | --- | --- | --- | --- | --- |
| 66 | **Instalaciones Sanitarias** | 21d | 2020-07-09 | 2020-08-06 |  |  |
| 67 | Situación Proyectada | 1d | 2020-07-09 | 2020-07-09 |  |  |
| 68 | **1. Memoria Descriptiva** | 13d | 2020-07-09 | 2020-07-27 |  |  |
| 69 | 1.1 Generalidades. Indicando la ubicación del establecimiento de salud, calles colindantes, clima, vías de acceso y alcances del proyecto (componentes que va a tener el proyecto) | 3d | 2020-07-09 | 2020-07-13 |  | M.C. Edison RIOS NORIEGA |
| 70 | 1.2 Describir detalladamente la fuente de agua y evacuación de los desagües adjuntando copia de la factibilidad de servicios de agua y desagüe emitido por la entidad prestadora de servicios | 3d | 2020-07-14 | 2020-07-16 |  | M.C. Edison RIOS NORIEGA |
| 71 | **1.3 Pre dimensionamiento de lo siguiente:** | 7d | 2020-07-17 | 2020-07-27 |  |  |
| 72 | i. Demanda de agua fría (dura), agua caliente y agua blanda, para un día de consumo; adjuntando cálculos justificativos. | 7d | 2020-07-17 | 2020-07-27 |  | M.C. Edison RIOS NORIEGA |
| 73 | ii. Estructuras de almacenamiento de agua (Cisternas y/o Tanque elevado). Considerar adicionalmente un día de reserva para la cisterna de agua fría; asimismo mencionar los tipos de cisterna según el nivel del techo de la cisterna respecto al nivel de supe | 7d | 2020-07-17 | 2020-07-27 |  | M.C. Edison RIOS NORIEGA |
| 74 | iii. Medidor de Agua y la Línea de Alimentación que ingresa a la cisterna de agua fría del EESS. Adjuntar cálculos justificativos. | 7d | 2020-07-17 | 2020-07-27 |  | M.C. Edison RIOS NORIEGA |
| 75 | iv. Describir el tipo de sistema de abastecimiento de agua (Directo, Indirecto o Mixto). | 7d | 2020-07-17 | 2020-07-27 |  | M.C. Edison RIOS NORIEGA |
| 76 | v. Componentes y características del sistema de agua fría (potencia y tipo de bombas a usar, redes de agua incluyendo tipo de tubería). | 7d | 2020-07-17 | 2020-07-27 |  | M.C. Edison RIOS NORIEGA |
| 77 | vi. Componentes y características del sistema de agua blanda (potencia y tipo de bombas a usar, redes de agua blanda incluyendo tipo de tubería). | 7d | 2020-07-17 | 2020-07-27 |  | M.C. Edison RIOS NORIEGA |
| 78 | vii. Componentes y características del sistema de agua caliente (T=80C y T=55C) y Retorno de Agua Caliente (potencia y tipo de bombas a usar, redes de agua caliente incluyendo tipo de tubería). | 7d | 2020-07-17 | 2020-07-27 |  | M.C. Edison RIOS NORIEGA |
| 79 | viii. Componentes y características del sistema de agua para riego. | 7d | 2020-07-17 | 2020-07-27 |  | M.C. Edison RIOS NORIEGA |
| 80 | ix. Componentes y características del sistema de agua contra incendio (ACI), incluyendo volumen de almacenamiento, bomba principal, bomba jockey. | 7d | 2020-07-17 | 2020-07-27 |  | M.C. Edison RIOS NORIEGA |
| 81 | x. Componentes y características del sistema de desagüe y ventilación (incluido los sistemas de bombeo de agua residuales si los hubiese). | 7d | 2020-07-17 | 2020-07-27 |  | M.C. Edison RIOS NORIEGA |
| 82 | xi. Unidades de acondicionamiento y/o sistemas de tratamiento de aguas residuales. | 7d | 2020-07-17 | 2020-07-27 |  | M.C. Edison RIOS NORIEGA |
| 83 | xii. Componentes y características del sistema de drenaje pluvial. | 7d | 2020-07-17 | 2020-07-27 |  | M.C. Edison RIOS NORIEGA |
| 84 | xiii. Sistema de Manejo de Residuos Sólidos Hospitalarios (en caso se disponga, caso contrario, precisar mecanismos para tratar dichos residuos). Condiciones de almacenamiento (intermedio/final) según corresponda. | 7d | 2020-07-17 | 2020-07-27 |  | M.C. Edison RIOS NORIEGA |
| 85 | xiv. Descripción de aparatos, griferías y accesorios de primera calidad, que permitan optimizar el consumo de agua." | 7d | 2020-07-17 | 2020-07-27 |  | M.C. Edison RIOS NORIEGA |
| 86 | 2. Señalar las consideraciones y especificaciones técnicas generales consideradas en el anteproyecto, con los cuales se sustentarán los costos de inversión, señalando los supuestos y metodología utilizada | 3d | 2020-07-28 | 2020-07-30 |  | M.C. Edison RIOS NORIEGA |
| 87 | 3. Planos de las instalaciones sanitarias | 5d | 2020-07-31 | 2020-08-06 |  | M.C. Edison RIOS NORIEGA |
| 88 | **Memoria De Equipamiento** | 22d | 2020-07-06 | 2020-08-04 |  |  |
| 89 | **Situación Proyectada** | 22d | 2020-07-06 | 2020-08-04 |  |  |
| 90 | 1. Memoria Descriptiva, que incluye las especificaciones técnicas de los equipos más representativos | 3d | 2020-07-06 | 2020-07-08 |  | M.C. Edison RIOS NORIEGA |
| 91 | **2. Programa de Equipamiento** | 3d | 2020-07-09 | 2020-07-13 |  |  |
| 92 | Por servicios y Unidades Funcionales: Equipo Biomédico (B), Equipo Complementarios ( C ), Equipo Informático (INF), Instrumental Médico (I), Equipo Electromecánico ( E ), Mobiliario Clínico (MC ), Mobiliario Administrativo (MA), Lencería (L), Menajería (M | 3d | 2020-07-09 | 2020-07-13 | 90 | M.C. Edison RIOS NORIEGA |
| 93 | 3. Listado de equipos por UPSS, UPS y de todos los ambientes del establecimiento (Con PMA Aprobado)" | 2d | 2020-07-14 | 2020-07-15 | 92 | M.C. Edison RIOS NORIEGA |
| 94 | **4. Listado consolidado del equipamiento por grupo genérico del proyecto** | 9d | 2020-07-16 | 2020-07-28 |  |  |
| 95 | LISTADO CONSOLIDADO DE EQUIPAMIENTO POR GRUPO GENERICO DEL PROYECTO (Debe ponerse especial énfasis en las claves del equipamiento por Servicios y Unidades Funcionales [RM 660-2014-MINSA DGIEM]) | 2d | 2020-07-16 | 2020-07-17 | 93 | M.C. Edison RIOS NORIEGA |
| 96 | ESPECIFICACIONES TÉCNICAS DEL EQUIPAMIENTO PROPUESTO POR GRUPO GENERICO DEL PROYECTO | 2d | 2020-07-20 | 2020-07-21 | 95 | M.C. Edison RIOS NORIEGA |
| 97 | LISTADO CONSOLIDADO DE EQUIPAMIENTO POR GRUPO GENERICO PROPUESTO CON COSTOS DEL PROYECTO: Clave + Denominación del Equipo + Tipo + Cantidad (Brecha) + Costo Unitario + Costo Total. (Describir los criterios para la determinación de los costos) | 2d | 2020-07-22 | 2020-07-23 | 96 | M.C. Edison RIOS NORIEGA |
| 98 | CUADRO CONSOLIDADO TOTAL DEL EQUIPAMIENTO PARA EL PROYECTO + CANTIDAD DE EQUIPOS + PRECIO ESTIMADO | 2d | 2020-07-24 | 2020-07-27 | 97 | M.C. Edison RIOS NORIEGA |
| 99 | Costos de O y M (Sin Proyecto y Con Proyecto) | 1d | 2020-07-28 | 2020-07-28 | 98 | M.C. Edison RIOS NORIEGA |
| 100 | 5. Cotizaciones de los equipos más representativos | 2d | 2020-07-29 | 2020-07-30 | 99 | M.C. Edison RIOS NORIEGA |
| 101 | 6. Equipamiento del Plan de Contingencia | 3d | 2020-07-31 | 2020-08-04 | 100 | M.C. Edison RIOS NORIEGA |
| 102 | **Recursos Humanos** | 10d | 2020-07-06 | 2020-07-17 |  |  |
| 103 | **Situación proyectada** | 10d | 2020-07-06 | 2020-07-17 |  |  |
| 104 | Informe técnico de implementación de recursos humanos incrementales | 5d | 2020-07-06 | 2020-07-10 |  | M.C. Edison RIOS NORIEGA |
| 105 | Informe sobre capacidad presupuestal para financiar gasto incremental | 3d | 2020-07-06 | 2020-07-08 |  | M.C. Edison RIOS NORIEGA |
| 106 | Informe de compromiso de formación de plazas profesionales incrementales | 10d | 2020-07-06 | 2020-07-17 |  | M.C. Edison RIOS NORIEGA |

Changed:

| ID | Task | Other |
| --- | --- | --- |
| 51 | **Memoria de Arquitectura** | was named MEMORIA DE ARQUITECTURA |
